Schedule from MS Project, 2023-05-20 to 2026-03-20, status date 2023-08-23, costs in $, A marks actual dates.

## Calendars

- Standard: Mon-Fri 08:00-12:00, 13:00-17:00; Sat-Sun off.

## Resources

| Resource | Group | Rate | Cost per use |
| --- | --- | --- | --- |
| اعضای فیلمسازی | cr | 15 |  |
| بازیگران | cr | 200 |  |
| تجهیزات | eq | 20 | 3000 |
| فروشندگان |  |  |  |
| مکان ها |  |  |  |

## Schedule

| ID | WBS | Task | Type | Duration | Start | Finish | Predecessors | Complete | Remaining | Baseline start | Baseline finish | Baseline duration | Total slack | Free slack | Resources | Work | Actual work | Cost | Baseline cost | Actual cost |
| --- | --- | --- | --- | --- | --- | --- | --- | --- | --- | --- | --- | --- | --- | --- | --- | --- | --- | --- | --- | --- |
| 1 | 1 | شروع | milestone | 0d | 2023-05-20 | 2023-05-20 |  |  |  |  |  |  | 739.5d |  |  |  |  |  |  |  |
| 2 | 2 | **Initiating** |  | 37d | 2023-05-20 A | 2023-07-11 |  | 92% | 3d | 2023-05-20 | 2023-07-05 | 33d | 702.5d |  |  | 576h | 528h | 8,640 | 7,680 | 7,920 |
| 3 | 2.1 | تعریف اهداف و محدوده پروژه |  | 6d | 2023-05-20 A | 2023-05-26 A |  | 100% |  | 2023-05-20 | 2023-05-25 | 5d |  |  | اعضای فیلمسازی [200%] | 96h | 96h | 1,440 | 1,200 | 1,440 |
| 4 | 2.2 | انجام تحلیل امکان سنجی |  | 7d | 2023-05-26 A | 2023-06-05 A | 3 | 100% |  | 2023-05-26 | 2023-06-05 | 7d |  |  | اعضای فیلمسازی | 56h | 56h | 840 | 840 | 840 |
| 5 | 2.3 | تامین بودجه و منابع |  | 14d | 2023-06-06 A | 2023-06-23 A | 4 | 100% |  | 2023-06-06 | 2023-06-23 | 14d |  |  | اعضای فیلمسازی [200%] | 224h | 224h | 3,360 | 3,360 | 3,360 |
| 6 | 2.4 | تشکیل تیم پروژه و تعیین نقش ها و مسئولیت ها |  | 5d | 2023-05-26 A | 2023-06-01 A | 3 | 100% |  | 2023-05-26 | 2023-05-30 | 3d |  |  | اعضای فیلمسازی [300%] | 120h | 120h | 1,800 | 1,080 | 1,800 |
| 7 | 2.5 | تدوین منشور پروژه |  | 5d | 2023-06-29 A | 2023-07-11 | 6 | 40% | 3d | 2023-06-29 | 2023-07-05 | 5d | 702.5d |  | اعضای فیلمسازی [200%] | 80h | 32h | 1,200 | 1,200 | 480 |
| 8 | 3 | **Planning** |  | 37d | 2023-05-22 A | 2023-07-11 |  | 88% | 4.51d | 2023-05-22 | 2023-06-02 | 10d | 702.5d |  |  | 576h | 528h | 8,640 | 8,160 | 7,920 |
| 9 | 3.1 | برنامه ریزی مدیریت پروژه |  | 12d | 2023-05-22 A | 2023-06-06 A | 7 | 100% |  | 2023-05-22 | 2023-06-02 | 10d |  |  | اعضای فیلمسازی [200%] | 192h | 192h | 2,880 | 2,400 | 2,880 |
| 10 | 3.2 | برنامه زمانی و نقاط عطف |  | 7d | 2023-05-23 A | 2023-07-03 | 9 | 86% | 1d | 2023-05-23 | 2023-05-31 | 7d | 0d |  | اعضای فیلمسازی [200%] | 112h | 96h | 1,680 | 1,680 | 1,440 |
| 11 | 3.3 | شناسایی و تحلیل ریسک های پروژه |  | 5d | 2023-05-23 A | 2023-07-05 | 10 | 60% | 2d | 2023-05-23 | 2023-05-29 | 5d | 2d | 0d | اعضای فیلمسازی | 40h | 24h | 600 | 600 | 360 |
| 12 | 3.4 | توسعه بودجه و تخمین هزینه ها |  | 7d | 2023-05-23 A | 2023-07-11 | 11 | 71% | 2d | 2023-05-23 | 2023-05-31 | 7d | 702.5d | 0d | اعضای فیلمسازی | 56h | 40h | 840 | 840 | 600 |
| 13 | 3.5 | تعریف برنامه ارتباطی پروژه |  | 4d | 2023-05-23 A | 2023-05-26 A | 12 | 100% |  | 2023-05-23 | 2023-05-26 | 4d |  |  | اعضای فیلمسازی | 32h | 32h | 480 | 480 | 480 |
| 14 | 3.6 | تعیین نیازهای تدارکات و برنامه ریزی |  | 6d | 2023-05-23 A | 2023-05-30 A | 13 | 100% |  | 2023-05-23 | 2023-05-30 | 6d |  |  | اعضای فیلمسازی [300%] | 144h | 144h | 2,160 | 2,160 | 2,160 |
| 15 | 4 | **Executing** |  | 738.5d | 2023-05-23 A | 2026-03-20 |  | 52% | 355.19d | 2023-05-23 | 2023-11-03 | 119d | 0d |  |  | 55036.8h | 23736h | 6,447,401 | 2,876,320 | 248,720 |
| 16 | 4.1 | استخدام بازیگران و خدمه |  | 40d | 2023-05-23 A | 2023-12-15 | 14 | 50% | 20d | 2023-05-23 | 2023-06-09 | 14d | 0d |  | اعضای فیلمسازی [500%] | 1600h | 800h | 24,000 | 277,200 | 12,000 |
| 17 | 4.2 | رسیدگی به مجوز های فیلم برداری |  | 10d | 2023-05-23 A | 2023-06-05 A | 16 | 100% |  | 2023-05-23 | 2023-06-05 | 10d |  |  | مکان ها [0.1%]; فروشندگان [0.1%] |  |  | 1,800 | 3,000 | 1,800 |
| 18 | 4.3 | ایده های طوفان فکری |  | 7d | 2023-05-23 A | 2023-05-31 A |  | 100% |  | 2023-05-23 | 2023-05-31 | 7d |  |  | اعضای فیلمسازی | 56h | 56h | 840 | 840 | 840 |
| 19 | 4.4 | ساخت فیلمنامه و استوری بورد |  | 40d | 2023-06-05 A | 2023-12-25 | 16 | 85% | 6d | 2023-06-05 | 2023-07-14 | 30d | 0d |  | اعضای فیلمسازی | 320h | 272h | 4,800 | 3,600 | 4,080 |
| 20 | 4.5 | ایجاد یک سبک بصری برای فیلم |  | 8d | 2023-07-17 A | 2023-07-26 A | 19 | 100% |  | 2023-07-17 | 2023-07-25 | 7d |  |  | اعضای فیلمسازی [200%] | 128h | 128h | 1,920 | 1,680 | 1,920 |
| 21 | 4.6 | انجام عکاسی اصلی برای صحنه ها |  | 8d | 2023-07-17 A | 2023-07-26 A | 19 | 100% |  | 2023-07-17 | 2023-07-25 | 7d |  |  | اعضای فیلمسازی [200%] | 128h | 128h | 1,920 | 1,680 | 1,920 |
| 22 | 4.7 | راه اندازی زیرساخت های تولید |  | 7d | 2023-06-05 A | 2023-07-04 | 14 | 71% | 2d | 2023-06-05 | 2023-06-13 | 7d | 154.4d | 28d | اعضای فیلمسازی [200%] | 112h | 80h | 1,680 | 1,680 | 1,200 |
| 23 | 4.8 | طراحی دکور |  | 14d | 2023-07-26 A | 2023-08-14 A | 21 | 100% |  | 2023-07-26 | 2023-08-14 | 14d |  |  | اعضای فیلمسازی; تجهیزات [200%] | 336h | 336h | 12,160 | 12,160 | 12,160 |
| 24 | 4.9 | طراحی لباس |  | 50d | 2023-07-17 A | 2024-01-30 | 19 | 48% | 26d | 2023-07-17 | 2023-08-11 | 20d | 5d | 0d | اعضای فیلمسازی [200%]; تجهیزات; بازیگران [300%] | 3888h | 2880h | 604,600 | 395,000 | 12,600 |
| 25 | 4.10 | آرایش و طراحی مو |  | 14d | 2023-08-15 A | 2023-09-01 A | 23, 24 | 100% |  | 2023-08-15 | 2023-08-28 | 10d |  |  | اعضای فیلمسازی; تجهیزات | 224h | 224h | 6,920 | 5,800 | 6,920 |
| 26 | 4.11 | عکسبرداری فیلم B-roll |  | 104d | 2023-08-20 A | 2024-05-28 | 22, 24 | 23% | 80d | 2023-08-14 | 2023-09-08 | 20d | 0d |  | تجهیزات [300%]; اعضای فیلمسازی [700%]; بازیگران [1100%] | 16868.8h | 4032h | 1,914,761 | 387,400 | 40,680 |
| 27 | 4.12 | ضبط صدا |  | 10d | 2023-07-12 A | 2023-07-25 A | 26 | 100% |  | 2023-07-12 | 2023-07-25 | 10d |  |  | اعضای فیلمسازی [400%]; تجهیزات | 400h | 400h | 9,400 | 9,400 | 9,400 |
| 28 | 4.13 | طراحی و ساخت ست و وسایل |  | 80d | 2023-06-14 A | 2024-08-27 | 26 | 19% | 65d | 2023-06-14 | 2023-07-04 | 15d | 408.1d |  | اعضای فیلمسازی [500%]; بازیگران [1100%]; تجهیزات | 10880h | 2040h | 1,471,800 | 278,400 | 14,400 |
| 29 | 4.14 | انجام تمرینات و تست‌های آزمایشی |  | 61.5d | 2023-05-24 A | 2024-02-13 | 19 | 41% | 36.5d | 2023-05-24 | 2023-06-27 | 25d | 547.6d |  | بازیگران [800%]; اعضای فیلمسازی [300%]; تجهیزات | 5616h | 2800h | 891,000 | 416,000 | 16,000 |
| 30 | 4.15 | گرفتن فیلم و صحنه |  | 71d | 2023-08-14 A | 2026-03-20 | 22, 24 | 63% | 26d | 2023-08-14 | 2023-10-20 | 50d | 0d |  | تجهیزات [500%]; بازیگران [1200%]; اعضای فیلمسازی [700%] | 13440h | 8640h | 1,473,800 | 1,057,000 | 88,800 |
| 31 | 4.16 | انتقال و ثبت فیلم |  | 11d | 2023-10-23 A | 2023-11-06 A | 30 | 100% |  | 2023-10-23 | 2023-11-03 | 10d |  |  | اعضای فیلمسازی [300%]; تجهیزات | 352h | 352h | 8,720 | 8,200 | 8,720 |
| 32 | 4.17 | جلوههای بصری |  | 15d | 2023-08-23 A | 2023-11-24 | 31 | 33% | 10d | 2023-08-23 | 2023-09-05 | 10d | 604.5d |  | تجهیزات; اعضای فیلمسازی [200%] | 240h | 120h | 7,000 | 7,000 | 5,000 |
| 33 | 4.18 | ویرایش و میکس صدا |  | 14d | 2023-08-23 A | 2023-09-11 A | 30 | 100% |  | 2023-08-23 | 2023-09-11 | 14d |  |  | اعضای فیلمسازی [300%]; تجهیزات | 448h | 448h | 10,280 | 10,280 | 10,280 |

| ID | WBS | Task | Type | Duration | Start | Finish | Predecessors | Complete | Remaining | Baseline start | Baseline finish | Baseline duration | Total slack | Resources | Work | Actual work | Cost | Baseline cost | Actual cost |
| --- | --- | --- | --- | --- | --- | --- | --- | --- | --- | --- | --- | --- | --- | --- | --- | --- | --- | --- | --- |
| 34 | 5 | **Monitoring and Controlling** |  | 34d | 2023-05-25 A | 2023-07-11 |  |  | 34d | 2023-05-25 | 2023-05-30 | 4d | 702.5d |  |  |  |  | 1,080 |  |
| 35 | 5.1 | نظارت بر پیشرفت و عملکرد پروژه | milestone | 0d | 2023-07-05 | 2023-07-05 | 11 |  |  | 2023-05-25 | 2023-05-25 | 0d | 706.5d | اعضای فیلمسازی |  |  |  |  |  |
| 36 | 5.2 | پیگیری بودجه و هزینه ها | milestone | 0d | 2023-07-11 | 2023-07-11 | 12 |  |  | 2023-05-25 | 2023-05-25 | 0d | 702.5d | اعضای فیلمسازی |  |  |  |  |  |
| 37 | 5.3 | تغییرات و مدیریت اسکوپ | milestone | 0d | 2023-05-25 A | 2023-05-25 A | 14 | 100% |  | 2023-05-25 | 2023-05-29 | 3d |  | اعضای فیلمسازی |  |  |  | 360 |  |
| 38 | 5.4 | انجام کنترل و تضمین کیفیت | milestone | 0d | 2023-06-06 | 2023-06-06 | 9 |  |  | 2023-05-25 | 2023-05-25 | 0d | 727.5d | اعضای فیلمسازی |  |  |  |  |  |
| 39 | 5.5 | بررسی و تایید محصولات تحویلی | milestone | 0d | 2023-05-25 A | 2023-05-25 A | 30 | 100% |  | 2023-05-25 | 2023-05-30 | 4d |  | اعضای فیلمسازی |  |  |  | 480 |  |
| 40 | 5.6 | انجام ارزیابی ریسک و کاهش آن | milestone | 0d | 2023-05-25 A | 2023-05-25 A | 30 | 100% |  | 2023-05-25 | 2023-05-26 | 2d |  | اعضای فیلمسازی |  |  |  | 240 |  |
| 41 | 5.7 | اتمام تولید | milestone | 0d | 2023-05-25 | 2023-05-25 | 40 |  |  |  |  |  | 736.5d |  |  |  |  |  |  |
| 42 | 6 | **Closing** |  | 135d | 2023-05-26 A | 2023-11-30 |  | 95% | 6.8d | 2023-05-26 | 2023-11-30 | 135d | 600.5d |  | 7480h | 7256h | 331,080 | 323,800 | 309,420 |
| 43 | 6.1 | پایان رساندن فعالیت های فیلمبرداری و تولید |  | 20d | 2023-10-23 A | 2023-11-17 A | 30 | 100% |  | 2023-10-23 | 2023-11-09 | 14d |  | اعضای فیلمسازی [300%]; فروشندگان [0.1%] | 480h | 480h | 11,200 | 9,040 | 7,200 |
| 44 | 6.2 | ایجاد مواد لازم برای ارسال، از جمله تریلر فیلم و کیت مطبوعاتی |  | 15d | 2023-11-10 A | 2023-11-30 A | 43 | 100% |  | 2023-11-10 | 2023-11-29 | 14d |  | تجهیزات; اعضای فیلمسازی [700%] | 960h | 960h | 18,000 | 17,000 | 18,000 |
| 45 | 6.3 | ویرایش و افکت های پس از تولید |  | 42d | 2023-05-26 A | 2023-07-24 A | 43 | 100% |  | 2023-05-26 | 2023-07-20 | 40d |  | تجهیزات; اعضای فیلمسازی [300%] | 1344h | 1344h | 24,840 | 23,800 | 24,840 |
| 46 | 6.4 | تهیه موسیقی متن |  | 25d | 2023-05-29 A | 2023-06-30 A | 26 | 100% |  | 2023-05-29 | 2023-06-15 | 14d |  | اعضای فیلمسازی; تجهیزات | 400h | 400h | 10,000 | 6,920 | 10,000 |
| 47 | 6.5 | تبلیغات |  | 12d | 2023-11-10 A | 2023-11-27 A | 43 | 100% |  | 2023-11-10 | 2023-11-16 | 5d |  | فروشندگان [0.1%] |  |  | 3,000 | 3,000 | 3,000 |
| 48 | 6.6 | ایجاد کمپین تبلیغاتی برای فیلم |  | 7d | 2023-11-17 A | 2023-11-27 A | 44 | 100% |  | 2023-11-17 | 2023-11-27 | 7d |  | اعضای فیلمسازی; فروشندگان [0.1%] | 56h | 56h | 2,840 | 2,840 | 840 |
| 49 | 6.7 | انجام نمایش های آزمایشی و بازخورد مخاطبان |  | 30d | 2023-06-16 A | 2023-10-19 | 46 | 53% | 14d | 2023-06-16 | 2023-07-27 | 30d | 630.5d | اعضای فیلمسازی [200%] | 480h | 256h | 7,200 | 7,200 | 3,840 |
| 50 | 6.8 | ایجاد و توزیع پوستر |  | 6d | 2023-07-28 A | 2023-08-04 A | 49 | 100% |  | 2023-07-28 | 2023-08-04 | 6d |  | اعضای فیلمسازی | 48h | 48h | 720 | 720 | 720 |
| 51 | 6.9 | ایجاد یک برنامه بازاریابی و استراتژی برای فیلم |  | 10d | 2023-11-17 A | 2023-11-30 | 47 | 90% | 1d | 2023-11-17 | 2023-11-30 | 10d | 600.5d | فروشندگان [0.1%] |  |  | 3,000 | 3,000 | 2,700 |
| 52 | 6.10 | پخش و بازاریابی فیلم |  | 60d | 2023-07-11 A | 2023-10-02 A | 49 | 100% |  | 2023-07-11 | 2023-10-02 | 60d |  | فروشندگان [0.1%]; اعضای فیلمسازی [300%] | 1440h | 1440h | 31,600 | 31,600 | 21,600 |
| 53 | 6.11 | **پخش آنلاین** |  | 119d | 2023-05-31 A | 2023-11-13 A |  | 100% |  | 2023-06-27 | 2023-06-27 | 1d |  |  | 2160h | 2160h | 217,000 | 217,000 | 215,000 |
| 54 | 6.11.1 | وب سایت |  | 7d | 2023-05-31 A | 2023-06-08 A | 52 | 100% |  | 2023-05-31 | 2023-06-05 | 4d |  | فروشندگان [0.1%] |  |  | 1,000 | 1,000 | 1,000 |
| 55 | 6.11.2 | تبلیغات فضای مجازی |  | 20d | 2023-06-06 A | 2023-07-03 A | 54 | 100% |  | 2023-06-06 | 2023-07-03 | 20d |  | فروشندگان [0.1%] |  |  | 4,000 | 4,000 | 4,000 |
| 56 | 6.11.3 | ترتیب و میزبانی نمایش های پیش نمایش و رویدادهای مطبوعاتی |  | 30d | 2023-10-03 A | 2023-11-13 A | 52 | 100% |  | 2023-10-03 | 2023-11-13 | 30d |  | بازیگران [400%]; اعضای فیلمسازی [500%]; فروشندگان [0.1%] | 2160h | 2160h | 212,000 | 212,000 | 210,000 |
| 57 | 6.12 | بررسی پروژه و درس های آموخته شد |  | 7d | 2023-06-01 A | 2023-06-09 A | 52 | 100% |  | 2023-06-01 | 2023-06-09 | 7d |  | اعضای فیلمسازی [200%] | 112h | 112h | 1,680 | 1,680 | 1,680 |
| 58 | 6.13 | بستن قراردادها و حساب های مالی |  | 7d | 2023-06-02 A | 2023-06-12 A | 57 | 100% |  | 2023-06-02 | 2023-06-12 | 7d |  |  |  |  |  |  |  |
| 59 | 6.14 | پایان | milestone | 0d | 2023-06-12 | 2023-06-12 | 58 |  |  |  |  |  | 723.5d |  |  |  |  |  |  |
